ID,WBS,Level,Name,Duration,Start,Finish,Predecessors,Resource,Milestone,Kind,Points,% Complete
1,1,1,착공 준비,8,2026-10-30,2026-11-10,,,,task,,100
2,1.1,2,인허가 확인,3,2026-10-30,2026-11-03,,김서연,,task,,100
3,1.2,2,가설 울타리·사무실,4,2026-11-04,2026-11-09,2,최도윤,,task,,100
4,1.3,2,착공,0,2026-11-10,2026-11-10,3,,yes,task,,100
5,2,1,기초 공사,20,2026-11-10,2026-12-07,,,,task,,35
6,2.1,2,터파기,6,2026-11-10,2026-11-17,4,최도윤,,task,,100
7,2.2,2,버림 콘크리트,2,2026-11-18,2026-11-19,6,최도윤,,task,,50
8,2.3,2,기초 철근 배근,5,2026-11-20,2026-11-26,7,박민준,,task,,0
9,2.4,2,기초 타설·양생,7,2026-11-27,2026-12-07,8,박민준,,task,,0
10,3,1,골조 공사,25,2026-12-08,2027-01-11,,,,task,,0
11,3.1,2,1층 골조,8,2026-12-08,2026-12-17,9,박민준,,task,,0
12,3.2,2,2층 골조,8,2026-12-18,2026-12-29,11,박민준,,task,,0
13,3.3,2,3층 골조,8,2026-12-30,2027-01-08,12,박민준,,task,,0
14,3.4,2,골조 완료 검측,0,2027-01-11,2027-01-11,13,,yes,task,,0
15,4,1,외부·설비,23,2026-12-25,2027-01-26,,,,task,,0
16,4.1,2,외벽·창호,12,2027-01-11,2027-01-26,14,이하은,,task,,0
17,4.2,2,전기 배관,10,2026-12-25,2027-01-07,12SS+5d,정하늘,,task,,0
18,4.3,2,급배수 설비,10,2026-12-29,2027-01-11,17SS+2d,정하늘,,task,,0
19,4.4,2,지붕 방수,5,2027-01-11,2027-01-15,13,이하은,,task,,0
20,5,1,마감·준공,19,2027-01-27,2027-02-22,,,,task,,0
21,5.1,2,내부 마감,15,2027-01-27,2027-02-16,16; 18,이하은,,task,,0
22,5.2,2,소방 검사,2,2027-02-15,2027-02-16,21FF,김서연,,task,,0
23,5.3,2,준공 청소,3,2027-02-17,2027-02-19,21,최도윤,,task,,0
24,5.4,2,준공,0,2027-02-22,2027-02-22,22; 23,,yes,task,,0
