# 건설 현장

Schedule from MS Project XML, 2026-10-30 to 2027-02-22.

## Resources

| Resource |
| --- |
| 김서연 |
| 최도윤 |
| 박민준 |
| 이하은 |
| 정하늘 |

## Schedule

| ID | WBS | Task | Type | Duration | Start | Finish | Predecessors | Complete | Resources |
| --- | --- | --- | --- | --- | --- | --- | --- | --- | --- |
| 1 | 1 | **착공 준비** |  | 8d | 2026-10-30 | 2026-11-10 |  | 100% |  |
| 2 | 1.1 | 인허가 확인 |  | 3d | 2026-10-30 | 2026-11-03 |  | 100% | 김서연 |
| 3 | 1.2 | 가설 울타리·사무실 |  | 4d | 2026-11-04 | 2026-11-09 | 2 | 100% | 최도윤 |
| 4 | 1.3 | 착공 | milestone | 0d | 2026-11-10 | 2026-11-10 | 3 | 100% |  |
| 5 | 2 | **기초 공사** |  | 20d | 2026-11-10 | 2026-12-07 |  | 35% |  |
| 6 | 2.1 | 터파기 |  | 6d | 2026-11-10 | 2026-11-17 | 4 | 100% | 최도윤 |
| 7 | 2.2 | 버림 콘크리트 |  | 2d | 2026-11-18 | 2026-11-19 | 6 | 50% | 최도윤 |
| 8 | 2.3 | 기초 철근 배근 |  | 5d | 2026-11-20 | 2026-11-26 | 7 |  | 박민준 |
| 9 | 2.4 | 기초 타설·양생 |  | 7d | 2026-11-27 | 2026-12-07 | 8 |  | 박민준 |
| 10 | 3 | **골조 공사** |  | 25d | 2026-12-08 | 2027-01-11 |  |  |  |
| 11 | 3.1 | 1층 골조 |  | 8d | 2026-12-08 | 2026-12-17 | 9 |  | 박민준 |
| 12 | 3.2 | 2층 골조 |  | 8d | 2026-12-18 | 2026-12-29 | 11 |  | 박민준 |
| 13 | 3.3 | 3층 골조 |  | 8d | 2026-12-30 | 2027-01-08 | 12 |  | 박민준 |
| 14 | 3.4 | 골조 완료 검측 | milestone | 0d | 2027-01-11 | 2027-01-11 | 13 |  |  |
| 15 | 4 | **외부·설비** |  | 23d | 2026-12-25 | 2027-01-26 |  |  |  |
| 16 | 4.1 | 외벽·창호 |  | 12d | 2027-01-11 | 2027-01-26 | 14 |  | 이하은 |
| 17 | 4.2 | 전기 배관 |  | 10d | 2026-12-25 | 2027-01-07 | 12SS+5d |  | 정하늘 |
| 18 | 4.3 | 급배수 설비 |  | 10d | 2026-12-29 | 2027-01-11 | 17SS+2d |  | 정하늘 |
| 19 | 4.4 | 지붕 방수 |  | 5d | 2027-01-11 | 2027-01-15 | 13 |  | 이하은 |
| 20 | 5 | **마감·준공** |  | 19d | 2027-01-27 | 2027-02-22 |  |  |  |
| 21 | 5.1 | 내부 마감 |  | 15d | 2027-01-27 | 2027-02-16 | 16, 18 |  | 이하은 |
| 22 | 5.2 | 소방 검사 |  | 2d | 2027-02-15 | 2027-02-16 | 21FF |  | 김서연 |
| 23 | 5.3 | 준공 청소 |  | 3d | 2027-02-17 | 2027-02-19 | 21 |  | 최도윤 |
| 24 | 5.4 | 준공 | milestone | 0d | 2027-02-22 | 2027-02-22 | 22, 23 |  |  |
